# 15-Story Residential Tower

Schedule from Primavera P6, 2027-01-05 to 2028-05-18, data date 2027-03-01, A marks actual dates.

## Calendars

- RES TWR - 6D x 8H (Mon-Sat): Mon-Sat 08:00-16:00; Sun off.

## Schedule

| ID | WBS | Activity | Type | Duration | Start | Finish | Predecessors | Complete | Remaining | Planned start | Planned finish | Total float | Free float |
| --- | --- | --- | --- | --- | --- | --- | --- | --- | --- | --- | --- | --- | --- |
|  | 01 | **Project Milestones & Controls** |  |  | 2027-01-05 | 2028-05-18 |  |  |  |  |  |  |  |
| M-START |  | Project Commencement | milestone | 0d | 2027-01-05 A | 2027-01-05 A |  | 100% |  |  |  |  |  |
| M-STRUCT |  | Structure Complete | milestone | 0d | 2028-01-19 | 2028-01-19 | RF-020 |  |  |  |  | 21d | 0d |
| M-ENVELOPE |  | Building Envelope Complete | milestone | 0d | 2028-02-09 | 2028-02-09 | ENV-01-030, ENV-02-030, ENV-03-030, ENV-04-030, ENV-05-030, RF-040 |  |  |  |  | 26d | 0d |
| M-HANDOVER |  | Practical Completion / Handover | milestone | 0d | 2028-05-18 | 2028-05-18 | TST-050, TST-040 |  |  |  |  | 0d |  |
|  | 02 | **Preconstruction & Mobilization** |  |  | 2027-01-05 | 2027-05-20 |  |  |  |  |  |  |  |
| PRE-010 |  | Construction drawings / design coordination |  | 20d | 2027-01-05 A | 2027-01-29 A | M-START | 100% |  | 2027-01-05 | 2027-01-27 |  |  |
| PRE-020 |  | Permits and authority mobilization approvals |  | 25d | 2027-01-05 A | 2027-02-11 A | M-START | 100% |  | 2027-01-05 | 2027-02-02 |  |  |
| PRE-030 |  | Site mobilization and temporary facilities |  | 10d | 2027-01-05 A | 2027-01-15 A | M-START | 100% |  |  |  |  |  |
| PRE-040 |  | Survey control and site setting out |  | 4d | 2027-01-16 A | 2027-01-20 A | PRE-030 | 100% |  |  |  |  |  |
| PRE-050 |  | HSE, QA/QC and method statement approvals |  | 8d | 2027-01-16 A | 2027-01-25 A | PRE-030 | 100% |  |  |  |  |  |
| PRE-060 |  | Long-lead equipment submittals and procurement |  | 90d | 2027-01-30 A | 2027-05-20 | PRE-010 | 22% | 70d | 2027-01-28 | 2027-05-12 | 194d | 72d |
| PRE-070 |  | Facade system shop drawings and procurement |  | 75d | 2027-01-30 A | 2027-05-08 | PRE-010 | 20% | 60d | 2027-01-28 | 2027-04-24 | 206d | 122d |
|  | 03 | **Enabling, Excavation & Substructure** |  |  | 2027-02-12 | 2027-09-09 |  |  |  |  |  |  |  |
|  | 01 | **Earthworks & Retention** |  |  | 2027-02-12 | 2027-04-26 |  |  |  |  |  |  |  |
| EXC-010 |  | Site clearing and utility investigation |  | 6d | 2027-02-12 A | 2027-02-19 A | PRE-040, PRE-020 | 100% |  | 2027-02-03 | 2027-02-09 |  |  |
| EXC-020 |  | Excavation support / shoring installation |  | 20d | 2027-02-20 A | 2027-03-22 | EXC-010, PRE-050 | 5% | 19d | 2027-02-10 | 2027-03-04 | 0d |  |
| EXC-030 |  | Excavation to basement 1 |  | 12d | 2027-03-23 | 2027-04-05 | EXC-020 |  |  |  |  | 0d |  |
| EXC-040 |  | Excavation to basement 2 and dewatering |  | 15d | 2027-04-06 | 2027-04-22 | EXC-030 |  |  |  |  | 0d |  |
| EXC-050 |  | Formation inspection and soil acceptance |  | 3d | 2027-04-23 | 2027-04-26 | EXC-040 |  |  |  |  | 0d |  |
|  | 02 | **Foundations & Basements** |  |  | 2027-04-27 | 2027-09-09 |  |  |  |  |  |  |  |
| SUB-010 |  | Blinding concrete and foundation layout |  | 5d | 2027-04-27 | 2027-05-01 | EXC-050 |  |  |  |  | 0d |  |
| SUB-020 |  | Raft reinforcement, embeds and formwork |  | 18d | 2027-05-03 | 2027-05-22 | SUB-010 |  |  |  |  | 0d |  |
| SUB-030 |  | Raft pre-pour inspection |  | 2d | 2027-05-24 | 2027-05-25 | SUB-020 |  |  |  |  | 0d |  |
| SUB-040 |  | Raft concrete pour and curing / strength release |  | 10d | 2027-05-26 | 2027-06-05 | SUB-030 |  |  |  |  | 0d |  |
| B2-010 |  | Basement 2 columns and walls |  | 9d | 2027-06-07 | 2027-06-16 | SUB-040 |  |  |  |  | 0d |  |
| B2-020 |  | Basement 2 slab formwork and reinforcement |  | 10d | 2027-06-17 | 2027-06-28 | B2-010 |  |  |  |  | 0d |  |
| B2-030 |  | Basement 2 MEP sleeves and pre-pour inspection |  | 3d | 2027-06-29 | 2027-07-01 | B2-020 |  |  |  |  | 0d |  |
| B2-040 |  | Basement 2 slab pour and strength release |  | 7d | 2027-07-02 | 2027-07-09 | B2-030 |  |  |  |  | 0d |  |
| B1-010 |  | Basement 1 columns and walls |  | 9d | 2027-07-10 | 2027-07-20 | B2-040 |  |  |  |  | 0d |  |
| B1-020 |  | Basement 1 slab formwork and reinforcement |  | 10d | 2027-07-21 | 2027-07-31 | B1-010 |  |  |  |  | 0d |  |
| B1-030 |  | Basement 1 MEP sleeves and pre-pour inspection |  | 3d | 2027-08-02 | 2027-08-04 | B1-020 |  |  |  |  | 0d |  |
| B1-040 |  | Basement 1 slab pour and strength release |  | 7d | 2027-08-05 | 2027-08-12 | B1-030 |  |  |  |  | 0d |  |
| SUB-090 |  | Basement external waterproofing and protection |  | 14d | 2027-08-13 | 2027-08-28 | B1-040 |  |  |  |  | 151d | 0d |
| SUB-100 |  | Basement backfill and compaction |  | 10d | 2027-08-30 | 2027-09-09 | SUB-090 |  |  |  |  | 151d | 0d |

| ID | WBS | Activity | Duration | Start | Finish | Predecessors | Total float |
| --- | --- | --- | --- | --- | --- | --- | --- |
|  | 04 | **Superstructure** |  | 2027-08-13 | 2028-01-19 |  |  |
|  | 01 | **Ground Floor** |  | 2027-08-13 | 2027-09-03 |  |  |
| GF-010 |  | Ground floor columns and core walls | 6d | 2027-08-13 | 2027-08-19 | B1-040 | 0d |
| GF-020 |  | Ground floor slab formwork and reinforcement | 6d | 2027-08-20 | 2027-08-26 | GF-010 | 0d |
| GF-030 |  | Ground floor embedded services / inspection | 2d | 2027-08-27 | 2027-08-28 | GF-020 | 0d |
| GF-040 |  | Ground floor concrete pour and release | 5d | 2027-08-30 | 2027-09-03 | GF-030 | 0d |
|  | 02 | **Residential Floors** |  | 2027-09-04 | 2028-01-04 |  |  |
|  | 01 | **Level 01 - Structure** |  | 2027-09-04 | 2027-09-11 |  |  |
| S01-010 |  | L01 vertical elements / core | 2d | 2027-09-04 | 2027-09-06 | GF-040 | 0d |
| S01-020 |  | L01 slab formwork and reinforcement | 2d | 2027-09-07 | 2027-09-08 | S01-010 | 0d |
| S01-030 |  | L01 MEP embeds and pre-pour inspection | 1d | 2027-09-09 | 2027-09-09 | S01-020 | 0d |
| S01-040 |  | L01 slab concrete and workface release | 2d | 2027-09-10 | 2027-09-11 | S01-030 | 0d |
|  | 02 | **Level 02 - Structure** |  | 2027-09-13 | 2027-09-20 |  |  |
| S02-010 |  | L02 vertical elements / core | 2d | 2027-09-13 | 2027-09-14 | S01-040 | 0d |
| S02-020 |  | L02 slab formwork and reinforcement | 2d | 2027-09-15 | 2027-09-16 | S02-010 | 0d |
| S02-030 |  | L02 MEP embeds and pre-pour inspection | 1d | 2027-09-17 | 2027-09-17 | S02-020 | 0d |
| S02-040 |  | L02 slab concrete and workface release | 2d | 2027-09-18 | 2027-09-20 | S02-030 | 0d |
|  | 03 | **Level 03 - Structure** |  | 2027-09-21 | 2027-09-28 |  |  |
| S03-010 |  | L03 vertical elements / core | 2d | 2027-09-21 | 2027-09-22 | S02-040 | 0d |
| S03-020 |  | L03 slab formwork and reinforcement | 2d | 2027-09-23 | 2027-09-24 | S03-010 | 0d |
| S03-030 |  | L03 MEP embeds and pre-pour inspection | 1d | 2027-09-25 | 2027-09-25 | S03-020 | 0d |
| S03-040 |  | L03 slab concrete and workface release | 2d | 2027-09-27 | 2027-09-28 | S03-030 | 0d |
|  | 04 | **Level 04 - Structure** |  | 2027-09-29 | 2027-10-06 |  |  |
| S04-010 |  | L04 vertical elements / core | 2d | 2027-09-29 | 2027-09-30 | S03-040 | 0d |
| S04-020 |  | L04 slab formwork and reinforcement | 2d | 2027-10-01 | 2027-10-02 | S04-010 | 0d |
| S04-030 |  | L04 MEP embeds and pre-pour inspection | 1d | 2027-10-04 | 2027-10-04 | S04-020 | 0d |
| S04-040 |  | L04 slab concrete and workface release | 2d | 2027-10-05 | 2027-10-06 | S04-030 | 0d |

| ID | WBS | Activity | Duration | Start | Finish | Predecessors | Total float |
| --- | --- | --- | --- | --- | --- | --- | --- |
|  | 05 | **Level 05 - Structure** |  | 2027-10-07 | 2027-10-14 |  |  |
| S05-010 |  | L05 vertical elements / core | 2d | 2027-10-07 | 2027-10-08 | S04-040 | 0d |
| S05-020 |  | L05 slab formwork and reinforcement | 2d | 2027-10-09 | 2027-10-11 | S05-010 | 0d |
| S05-030 |  | L05 MEP embeds and pre-pour inspection | 1d | 2027-10-12 | 2027-10-12 | S05-020 | 0d |
| S05-040 |  | L05 slab concrete and workface release | 2d | 2027-10-13 | 2027-10-14 | S05-030 | 0d |
|  | 06 | **Level 06 - Structure** |  | 2027-10-15 | 2027-10-22 |  |  |
| S06-010 |  | L06 vertical elements / core | 2d | 2027-10-15 | 2027-10-16 | S05-040 | 0d |
| S06-020 |  | L06 slab formwork and reinforcement | 2d | 2027-10-18 | 2027-10-19 | S06-010 | 0d |
| S06-030 |  | L06 MEP embeds and pre-pour inspection | 1d | 2027-10-20 | 2027-10-20 | S06-020 | 0d |
| S06-040 |  | L06 slab concrete and workface release | 2d | 2027-10-21 | 2027-10-22 | S06-030 | 0d |
|  | 07 | **Level 07 - Structure** |  | 2027-10-23 | 2027-10-30 |  |  |
| S07-010 |  | L07 vertical elements / core | 2d | 2027-10-23 | 2027-10-25 | S06-040 | 0d |
| S07-020 |  | L07 slab formwork and reinforcement | 2d | 2027-10-26 | 2027-10-27 | S07-010 | 0d |
| S07-030 |  | L07 MEP embeds and pre-pour inspection | 1d | 2027-10-28 | 2027-10-28 | S07-020 | 0d |
| S07-040 |  | L07 slab concrete and workface release | 2d | 2027-10-29 | 2027-10-30 | S07-030 | 0d |
|  | 08 | **Level 08 - Structure** |  | 2027-11-01 | 2027-11-08 |  |  |
| S08-010 |  | L08 vertical elements / core | 2d | 2027-11-01 | 2027-11-02 | S07-040 | 0d |
| S08-020 |  | L08 slab formwork and reinforcement | 2d | 2027-11-03 | 2027-11-04 | S08-010 | 0d |
| S08-030 |  | L08 MEP embeds and pre-pour inspection | 1d | 2027-11-05 | 2027-11-05 | S08-020 | 0d |
| S08-040 |  | L08 slab concrete and workface release | 2d | 2027-11-06 | 2027-11-08 | S08-030 | 0d |
|  | 09 | **Level 09 - Structure** |  | 2027-11-09 | 2027-11-16 |  |  |
| S09-010 |  | L09 vertical elements / core | 2d | 2027-11-09 | 2027-11-10 | S08-040 | 0d |
| S09-020 |  | L09 slab formwork and reinforcement | 2d | 2027-11-11 | 2027-11-12 | S09-010 | 0d |
| S09-030 |  | L09 MEP embeds and pre-pour inspection | 1d | 2027-11-13 | 2027-11-13 | S09-020 | 0d |
| S09-040 |  | L09 slab concrete and workface release | 2d | 2027-11-15 | 2027-11-16 | S09-030 | 0d |

| ID | WBS | Activity | Duration | Start | Finish | Predecessors | Total float |
| --- | --- | --- | --- | --- | --- | --- | --- |
|  | 10 | **Level 10 - Structure** |  | 2027-11-17 | 2027-11-24 |  |  |
| S10-010 |  | L10 vertical elements / core | 2d | 2027-11-17 | 2027-11-18 | S09-040 | 0d |
| S10-020 |  | L10 slab formwork and reinforcement | 2d | 2027-11-19 | 2027-11-20 | S10-010 | 0d |
| S10-030 |  | L10 MEP embeds and pre-pour inspection | 1d | 2027-11-22 | 2027-11-22 | S10-020 | 0d |
| S10-040 |  | L10 slab concrete and workface release | 2d | 2027-11-23 | 2027-11-24 | S10-030 | 0d |
|  | 11 | **Level 11 - Structure** |  | 2027-11-25 | 2027-12-02 |  |  |
| S11-010 |  | L11 vertical elements / core | 2d | 2027-11-25 | 2027-11-26 | S10-040 | 0d |
| S11-020 |  | L11 slab formwork and reinforcement | 2d | 2027-11-27 | 2027-11-29 | S11-010 | 0d |
| S11-030 |  | L11 MEP embeds and pre-pour inspection | 1d | 2027-11-30 | 2027-11-30 | S11-020 | 0d |
| S11-040 |  | L11 slab concrete and workface release | 2d | 2027-12-01 | 2027-12-02 | S11-030 | 0d |
|  | 12 | **Level 12 - Structure** |  | 2027-12-03 | 2027-12-10 |  |  |
| S12-010 |  | L12 vertical elements / core | 2d | 2027-12-03 | 2027-12-04 | S11-040 | 0d |
| S12-020 |  | L12 slab formwork and reinforcement | 2d | 2027-12-06 | 2027-12-07 | S12-010 | 0d |
| S12-030 |  | L12 MEP embeds and pre-pour inspection | 1d | 2027-12-08 | 2027-12-08 | S12-020 | 0d |
| S12-040 |  | L12 slab concrete and workface release | 2d | 2027-12-09 | 2027-12-10 | S12-030 | 0d |
|  | 13 | **Level 13 - Structure** |  | 2027-12-11 | 2027-12-18 |  |  |
| S13-010 |  | L13 vertical elements / core | 2d | 2027-12-11 | 2027-12-13 | S12-040 | 0d |
| S13-020 |  | L13 slab formwork and reinforcement | 2d | 2027-12-14 | 2027-12-15 | S13-010 | 0d |
| S13-030 |  | L13 MEP embeds and pre-pour inspection | 1d | 2027-12-16 | 2027-12-16 | S13-020 | 0d |
| S13-040 |  | L13 slab concrete and workface release | 2d | 2027-12-17 | 2027-12-18 | S13-030 | 0d |
|  | 14 | **Level 14 - Structure** |  | 2027-12-20 | 2027-12-27 |  |  |
| S14-010 |  | L14 vertical elements / core | 2d | 2027-12-20 | 2027-12-21 | S13-040 | 0d |
| S14-020 |  | L14 slab formwork and reinforcement | 2d | 2027-12-22 | 2027-12-23 | S14-010 | 0d |
| S14-030 |  | L14 MEP embeds and pre-pour inspection | 1d | 2027-12-24 | 2027-12-24 | S14-020 | 0d |
| S14-040 |  | L14 slab concrete and workface release | 2d | 2027-12-25 | 2027-12-27 | S14-030 | 0d |

| ID | WBS | Activity | Duration | Start | Finish | Predecessors | Total float | Free float |
| --- | --- | --- | --- | --- | --- | --- | --- | --- |
|  | 15 | **Level 15 - Structure** |  | 2027-12-28 | 2028-01-04 |  |  |  |
| S15-010 |  | L15 vertical elements / core | 2d | 2027-12-28 | 2027-12-29 | S14-040 | 0d |  |
| S15-020 |  | L15 slab formwork and reinforcement | 2d | 2027-12-30 | 2027-12-31 | S15-010 | 0d |  |
| S15-030 |  | L15 MEP embeds and pre-pour inspection | 1d | 2028-01-01 | 2028-01-01 | S15-020 | 0d |  |
| S15-040 |  | L15 slab concrete and workface release | 2d | 2028-01-03 | 2028-01-04 | S15-030 | 0d |  |
|  | 03 | **Roof** |  | 2028-01-05 | 2028-01-19 |  |  |  |
| RF-010 |  | Roof slab formwork, reinforcement and embeds | 6d | 2028-01-05 | 2028-01-11 | S15-040 | 21d | 0d |
| RF-020 |  | Roof slab pour and structural release | 7d | 2028-01-12 | 2028-01-19 | RF-010 | 21d | 0d |
|  | 05 | **Envelope & Waterproofing** |  | 2027-09-29 | 2028-02-09 |  |  |  |
|  | 01 | **Facade & Glazing** |  | 2027-09-29 | 2028-02-09 |  |  |  |
| ENV-01-010 |  | Facade brackets and substrate L01-L03 | 10d | 2027-09-29 | 2027-10-09 | S03-040, PRE-070 | 84d | 0d |
| ENV-01-020 |  | Facade glazing / cladding L01-L03 | 15d | 2027-10-11 | 2027-10-27 | ENV-01-010 | 84d | 0d |
| ENV-02-010 |  | Facade brackets and substrate L04-L06 | 10d | 2027-10-23 | 2027-11-03 | S06-040, PRE-070 | 63d | 0d |
| ENV-01-030 |  | Facade sealants and water testing L01-L03 | 6d | 2027-10-28 | 2027-11-03 | ENV-01-020 | 84d | 0d |
| ENV-02-020 |  | Facade glazing / cladding L04-L06 | 15d | 2027-11-04 | 2027-11-20 | ENV-02-010 | 63d | 0d |
| ENV-03-010 |  | Facade brackets and substrate L07-L09 | 10d | 2027-11-17 | 2027-11-27 | S09-040, PRE-070 | 42d | 0d |
| ENV-02-030 |  | Facade sealants and water testing L04-L06 | 6d | 2027-11-22 | 2027-11-27 | ENV-02-020 | 63d | 0d |
| ENV-03-020 |  | Facade glazing / cladding L07-L09 | 15d | 2027-11-29 | 2027-12-15 | ENV-03-010 | 42d | 0d |
| ENV-04-010 |  | Facade brackets and substrate L10-L12 | 10d | 2027-12-11 | 2027-12-22 | S12-040, PRE-070 | 21d | 0d |
| ENV-03-030 |  | Facade sealants and water testing L07-L09 | 6d | 2027-12-16 | 2027-12-22 | ENV-03-020 | 42d | 0d |
| ENV-04-020 |  | Facade glazing / cladding L10-L12 | 15d | 2027-12-23 | 2028-01-08 | ENV-04-010 | 21d | 0d |
| ENV-05-010 |  | Facade brackets and substrate L13-L15 | 10d | 2028-01-05 | 2028-01-15 | S15-040, PRE-070 | 0d |  |
| ENV-04-030 |  | Facade sealants and water testing L10-L12 | 6d | 2028-01-10 | 2028-01-15 | ENV-04-020 | 21d | 0d |
| ENV-05-020 |  | Facade glazing / cladding L13-L15 | 15d | 2028-01-17 | 2028-02-02 | ENV-05-010 | 0d |  |
| ENV-05-030 |  | Facade sealants and water testing L13-L15 | 6d | 2028-02-03 | 2028-02-09 | ENV-05-020 | 0d |  |

| ID | WBS | Activity | Duration | Start | Finish | Predecessors | Total float | Free float |
| --- | --- | --- | --- | --- | --- | --- | --- | --- |
|  | 02 | **Roof Waterproofing** |  | 2028-01-20 | 2028-02-08 |  |  |  |
| RF-030 |  | Roof falls, waterproofing and insulation | 12d | 2028-01-20 | 2028-02-02 | RF-020 | 27d | 0d |
| RF-040 |  | Roof waterproofing flood test and protection | 5d | 2028-02-03 | 2028-02-08 | RF-030 | 27d | 1d |
|  | 06 | **MEP Rough-In & Systems** |  | 2027-03-01 | 2028-03-16 |  |  |  |
|  | 01 | **Plant & Distribution** |  | 2027-03-01 | 2027-10-18 |  |  |  |
| MEP-010 |  | MEP coordinated shop drawings / builders work | 25d | 2027-03-01 | 2027-03-29 | PRE-010 | 242d | 117d |
| MEP-020 |  | Main electrical and plumbing risers | 30d | 2027-08-13 | 2027-09-16 | B1-040, MEP-010 | 129d | 0d |
| MEP-030 |  | MEP equipment delivery and plant room readiness | 12d | 2027-08-13 | 2027-08-26 | PRE-060, B1-040 | 122d | 0d |
| MEP-040 |  | Install main plant and electrical switchgear | 25d | 2027-08-27 | 2027-09-24 | MEP-030 | 122d | 0d |
| MEP-050 |  | Main distribution pipework and cable containment | 20d | 2027-09-25 | 2027-10-18 | MEP-020, MEP-040 | 122d | 38d |
|  | 02 | **Floor MEP Rough-In** |  | 2027-09-13 | 2028-03-16 |  |  |  |
|  | 01 | **Level 01 - MEP** |  | 2027-09-13 | 2027-12-09 |  |  |  |
| L01-M10 |  | L01 MEP first fix / rough-in | 9d | 2027-09-13 | 2027-09-22 | S01-040, MEP-010 | 99d | 0d |
| L01-M20 |  | L01 MEP rough-in pressure / continuity tests | 3d | 2027-09-23 | 2027-09-25 | L01-M10 | 99d | 0d |
| L01-M30 |  | L01 MEP second fix and fixtures | 7d | 2027-12-02 | 2027-12-09 | L01-A50, MEP-050 | 84d | 0d |
|  | 02 | **Level 02 - MEP** |  | 2027-09-21 | 2027-12-09 |  |  |  |
| L02-M10 |  | L02 MEP first fix / rough-in | 9d | 2027-09-21 | 2027-09-30 | S02-040, MEP-010 | 92d | 0d |
| L02-M20 |  | L02 MEP rough-in pressure / continuity tests | 3d | 2027-10-01 | 2027-10-04 | L02-M10 | 92d | 0d |
| L02-M30 |  | L02 MEP second fix and fixtures | 7d | 2027-12-02 | 2027-12-09 | L02-A50, MEP-050 | 84d | 0d |
|  | 03 | **Level 03 - MEP** |  | 2027-09-29 | 2027-12-09 |  |  |  |
| L03-M10 |  | L03 MEP first fix / rough-in | 9d | 2027-09-29 | 2027-10-08 | S03-040, MEP-010 | 85d | 0d |
| L03-M20 |  | L03 MEP rough-in pressure / continuity tests | 3d | 2027-10-09 | 2027-10-12 | L03-M10 | 85d | 0d |
| L03-M30 |  | L03 MEP second fix and fixtures | 7d | 2027-12-02 | 2027-12-09 | L03-A50, MEP-050 | 84d | 0d |
|  | 04 | **Level 04 - MEP** |  | 2027-10-07 | 2028-01-03 |  |  |  |
| L04-M10 |  | L04 MEP first fix / rough-in | 9d | 2027-10-07 | 2027-10-16 | S04-040, MEP-010 | 78d | 0d |
| L04-M20 |  | L04 MEP rough-in pressure / continuity tests | 3d | 2027-10-18 | 2027-10-20 | L04-M10 | 78d | 0d |
| L04-M30 |  | L04 MEP second fix and fixtures | 7d | 2027-12-27 | 2028-01-03 | L04-A50, MEP-050 | 63d | 0d |

| ID | WBS | Activity | Duration | Start | Finish | Predecessors | Total float | Free float |
| --- | --- | --- | --- | --- | --- | --- | --- | --- |
|  | 05 | **Level 05 - MEP** |  | 2027-10-15 | 2028-01-03 |  |  |  |
| L05-M10 |  | L05 MEP first fix / rough-in | 9d | 2027-10-15 | 2027-10-25 | S05-040, MEP-010 | 71d | 0d |
| L05-M20 |  | L05 MEP rough-in pressure / continuity tests | 3d | 2027-10-26 | 2027-10-28 | L05-M10 | 71d | 0d |
| L05-M30 |  | L05 MEP second fix and fixtures | 7d | 2027-12-27 | 2028-01-03 | L05-A50, MEP-050 | 63d | 0d |
|  | 06 | **Level 06 - MEP** |  | 2027-10-23 | 2028-01-03 |  |  |  |
| L06-M10 |  | L06 MEP first fix / rough-in | 9d | 2027-10-23 | 2027-11-02 | S06-040, MEP-010 | 64d | 0d |
| L06-M20 |  | L06 MEP rough-in pressure / continuity tests | 3d | 2027-11-03 | 2027-11-05 | L06-M10 | 64d | 0d |
| L06-M30 |  | L06 MEP second fix and fixtures | 7d | 2027-12-27 | 2028-01-03 | L06-A50, MEP-050 | 63d | 0d |
|  | 07 | **Level 07 - MEP** |  | 2027-11-01 | 2028-01-27 |  |  |  |
| L07-M10 |  | L07 MEP first fix / rough-in | 9d | 2027-11-01 | 2027-11-10 | S07-040, MEP-010 | 57d | 0d |
| L07-M20 |  | L07 MEP rough-in pressure / continuity tests | 3d | 2027-11-11 | 2027-11-13 | L07-M10 | 57d | 0d |
| L07-M30 |  | L07 MEP second fix and fixtures | 7d | 2028-01-20 | 2028-01-27 | L07-A50, MEP-050 | 42d | 0d |
|  | 08 | **Level 08 - MEP** |  | 2027-11-09 | 2028-01-27 |  |  |  |
| L08-M10 |  | L08 MEP first fix / rough-in | 9d | 2027-11-09 | 2027-11-18 | S08-040, MEP-010 | 50d | 0d |
| L08-M20 |  | L08 MEP rough-in pressure / continuity tests | 3d | 2027-11-19 | 2027-11-22 | L08-M10 | 50d | 0d |
| L08-M30 |  | L08 MEP second fix and fixtures | 7d | 2028-01-20 | 2028-01-27 | L08-A50, MEP-050 | 42d | 0d |
|  | 09 | **Level 09 - MEP** |  | 2027-11-17 | 2028-01-27 |  |  |  |
| L09-M10 |  | L09 MEP first fix / rough-in | 9d | 2027-11-17 | 2027-11-26 | S09-040, MEP-010 | 43d | 0d |
| L09-M20 |  | L09 MEP rough-in pressure / continuity tests | 3d | 2027-11-27 | 2027-11-30 | L09-M10 | 43d | 0d |
| L09-M30 |  | L09 MEP second fix and fixtures | 7d | 2028-01-20 | 2028-01-27 | L09-A50, MEP-050 | 42d | 0d |
|  | 10 | **Level 10 - MEP** |  | 2027-11-25 | 2028-02-21 |  |  |  |
| L10-M10 |  | L10 MEP first fix / rough-in | 9d | 2027-11-25 | 2027-12-04 | S10-040, MEP-010 | 36d | 0d |
| L10-M20 |  | L10 MEP rough-in pressure / continuity tests | 3d | 2027-12-06 | 2027-12-08 | L10-M10 | 36d | 0d |
| L10-M30 |  | L10 MEP second fix and fixtures | 7d | 2028-02-14 | 2028-02-21 | L10-A50, MEP-050 | 21d | 0d |

| ID | WBS | Activity | Duration | Start | Finish | Predecessors | Total float | Free float |
| --- | --- | --- | --- | --- | --- | --- | --- | --- |
|  | 11 | **Level 11 - MEP** |  | 2027-12-03 | 2028-02-21 |  |  |  |
| L11-M10 |  | L11 MEP first fix / rough-in | 9d | 2027-12-03 | 2027-12-13 | S11-040, MEP-010 | 29d | 0d |
| L11-M20 |  | L11 MEP rough-in pressure / continuity tests | 3d | 2027-12-14 | 2027-12-16 | L11-M10 | 29d | 0d |
| L11-M30 |  | L11 MEP second fix and fixtures | 7d | 2028-02-14 | 2028-02-21 | L11-A50, MEP-050 | 21d | 0d |
|  | 12 | **Level 12 - MEP** |  | 2027-12-11 | 2028-02-21 |  |  |  |
| L12-M10 |  | L12 MEP first fix / rough-in | 9d | 2027-12-11 | 2027-12-21 | S12-040, MEP-010 | 22d | 0d |
| L12-M20 |  | L12 MEP rough-in pressure / continuity tests | 3d | 2027-12-22 | 2027-12-24 | L12-M10 | 22d | 0d |
| L12-M30 |  | L12 MEP second fix and fixtures | 7d | 2028-02-14 | 2028-02-21 | L12-A50, MEP-050 | 21d | 0d |
|  | 13 | **Level 13 - MEP** |  | 2027-12-20 | 2028-03-16 |  |  |  |
| L13-M10 |  | L13 MEP first fix / rough-in | 9d | 2027-12-20 | 2027-12-29 | S13-040, MEP-010 | 15d | 0d |
| L13-M20 |  | L13 MEP rough-in pressure / continuity tests | 3d | 2027-12-30 | 2028-01-01 | L13-M10 | 15d | 0d |
| L13-M30 |  | L13 MEP second fix and fixtures | 7d | 2028-03-09 | 2028-03-16 | L13-A50, MEP-050 | 0d |  |
|  | 14 | **Level 14 - MEP** |  | 2027-12-28 | 2028-03-16 |  |  |  |
| L14-M10 |  | L14 MEP first fix / rough-in | 9d | 2027-12-28 | 2028-01-06 | S14-040, MEP-010 | 8d | 0d |
| L14-M20 |  | L14 MEP rough-in pressure / continuity tests | 3d | 2028-01-07 | 2028-01-10 | L14-M10 | 8d | 0d |
| L14-M30 |  | L14 MEP second fix and fixtures | 7d | 2028-03-09 | 2028-03-16 | L14-A50, MEP-050 | 0d |  |
|  | 15 | **Level 15 - MEP** |  | 2028-01-05 | 2028-03-16 |  |  |  |
| L15-M10 |  | L15 MEP first fix / rough-in | 9d | 2028-01-05 | 2028-01-14 | S15-040, MEP-010 | 1d | 0d |
| L15-M20 |  | L15 MEP rough-in pressure / continuity tests | 3d | 2028-01-15 | 2028-01-18 | L15-M10 | 1d | 0d |
| L15-M30 |  | L15 MEP second fix and fixtures | 7d | 2028-03-09 | 2028-03-16 | L15-A50, MEP-050 | 0d |  |
|  | 07 | **Architectural Finishes** |  | 2027-09-13 | 2028-03-22 |  |  |  |
|  | 01 | **Floor Finishes** |  | 2027-09-13 | 2028-03-22 |  |  |  |
|  | 01 | **Level 01 - Finishes** |  | 2027-09-13 | 2027-12-15 |  |  |  |
| L01-A10 |  | L01 partitions and wall framing | 10d | 2027-09-13 | 2027-09-23 | S01-040 | 101d | 2d |
| L01-A20 |  | L01 plaster / board closing | 10d | 2027-09-27 | 2027-10-07 | L01-A10, L01-M20 | 99d | 0d |
| L01-A30 |  | L01 screeds and wet area waterproofing | 8d | 2027-10-08 | 2027-10-16 | L01-A20 | 99d | 15d |
| L01-A40 |  | L01 tiling and flooring | 12d | 2027-11-04 | 2027-11-17 | L01-A30, ENV-01-030 | 84d | 0d |
| L01-A50 |  | L01 ceilings, paint and joinery | 12d | 2027-11-18 | 2027-12-01 | L01-A40 | 84d | 0d |
| L01-A60 |  | L01 final finishes / snagging | 5d | 2027-12-10 | 2027-12-15 | L01-M30 | 84d |  |

| ID | WBS | Activity | Duration | Start | Finish | Predecessors | Total float | Free float |
| --- | --- | --- | --- | --- | --- | --- | --- | --- |
|  | 02 | **Level 02 - Finishes** |  | 2027-09-21 | 2027-12-15 |  |  |  |
| L02-A10 |  | L02 partitions and wall framing | 10d | 2027-09-21 | 2027-10-01 | S02-040 | 94d | 2d |
| L02-A20 |  | L02 plaster / board closing | 10d | 2027-10-05 | 2027-10-15 | L02-A10, L02-M20 | 92d | 0d |
| L02-A30 |  | L02 screeds and wet area waterproofing | 8d | 2027-10-16 | 2027-10-25 | L02-A20 | 92d | 8d |
| L02-A40 |  | L02 tiling and flooring | 12d | 2027-11-04 | 2027-11-17 | L02-A30, ENV-01-030 | 84d | 0d |
| L02-A50 |  | L02 ceilings, paint and joinery | 12d | 2027-11-18 | 2027-12-01 | L02-A40 | 84d | 0d |
| L02-A60 |  | L02 final finishes / snagging | 5d | 2027-12-10 | 2027-12-15 | L02-M30 | 84d |  |
|  | 03 | **Level 03 - Finishes** |  | 2027-09-29 | 2027-12-15 |  |  |  |
| L03-A10 |  | L03 partitions and wall framing | 10d | 2027-09-29 | 2027-10-09 | S03-040 | 87d | 2d |
| L03-A20 |  | L03 plaster / board closing | 10d | 2027-10-13 | 2027-10-23 | L03-A10, L03-M20 | 85d | 0d |
| L03-A30 |  | L03 screeds and wet area waterproofing | 8d | 2027-10-25 | 2027-11-02 | L03-A20 | 85d | 1d |
| L03-A40 |  | L03 tiling and flooring | 12d | 2027-11-04 | 2027-11-17 | L03-A30, ENV-01-030 | 84d | 0d |
| L03-A50 |  | L03 ceilings, paint and joinery | 12d | 2027-11-18 | 2027-12-01 | L03-A40 | 84d | 0d |
| L03-A60 |  | L03 final finishes / snagging | 5d | 2027-12-10 | 2027-12-15 | L03-M30 | 84d |  |
|  | 04 | **Level 04 - Finishes** |  | 2027-10-07 | 2028-01-08 |  |  |  |
| L04-A10 |  | L04 partitions and wall framing | 10d | 2027-10-07 | 2027-10-18 | S04-040 | 80d | 2d |
| L04-A20 |  | L04 plaster / board closing | 10d | 2027-10-21 | 2027-11-01 | L04-A10, L04-M20 | 78d | 0d |
| L04-A30 |  | L04 screeds and wet area waterproofing | 8d | 2027-11-02 | 2027-11-10 | L04-A20 | 78d | 15d |
| L04-A40 |  | L04 tiling and flooring | 12d | 2027-11-29 | 2027-12-11 | L04-A30, ENV-02-030 | 63d | 0d |
| L04-A50 |  | L04 ceilings, paint and joinery | 12d | 2027-12-13 | 2027-12-25 | L04-A40 | 63d | 0d |
| L04-A60 |  | L04 final finishes / snagging | 5d | 2028-01-04 | 2028-01-08 | L04-M30 | 63d |  |
|  | 05 | **Level 05 - Finishes** |  | 2027-10-15 | 2028-01-08 |  |  |  |
| L05-A10 |  | L05 partitions and wall framing | 10d | 2027-10-15 | 2027-10-26 | S05-040 | 73d | 2d |
| L05-A20 |  | L05 plaster / board closing | 10d | 2027-10-29 | 2027-11-09 | L05-A10, L05-M20 | 71d | 0d |
| L05-A30 |  | L05 screeds and wet area waterproofing | 8d | 2027-11-10 | 2027-11-18 | L05-A20 | 71d | 8d |
| L05-A40 |  | L05 tiling and flooring | 12d | 2027-11-29 | 2027-12-11 | L05-A30, ENV-02-030 | 63d | 0d |
| L05-A50 |  | L05 ceilings, paint and joinery | 12d | 2027-12-13 | 2027-12-25 | L05-A40 | 63d | 0d |
| L05-A60 |  | L05 final finishes / snagging | 5d | 2028-01-04 | 2028-01-08 | L05-M30 | 63d |  |

| ID | WBS | Activity | Duration | Start | Finish | Predecessors | Total float | Free float |
| --- | --- | --- | --- | --- | --- | --- | --- | --- |
|  | 06 | **Level 06 - Finishes** |  | 2027-10-23 | 2028-01-08 |  |  |  |
| L06-A10 |  | L06 partitions and wall framing | 10d | 2027-10-23 | 2027-11-03 | S06-040 | 66d | 2d |
| L06-A20 |  | L06 plaster / board closing | 10d | 2027-11-06 | 2027-11-17 | L06-A10, L06-M20 | 64d | 0d |
| L06-A30 |  | L06 screeds and wet area waterproofing | 8d | 2027-11-18 | 2027-11-26 | L06-A20 | 64d | 1d |
| L06-A40 |  | L06 tiling and flooring | 12d | 2027-11-29 | 2027-12-11 | L06-A30, ENV-02-030 | 63d | 0d |
| L06-A50 |  | L06 ceilings, paint and joinery | 12d | 2027-12-13 | 2027-12-25 | L06-A40 | 63d | 0d |
| L06-A60 |  | L06 final finishes / snagging | 5d | 2028-01-04 | 2028-01-08 | L06-M30 | 63d |  |
|  | 07 | **Level 07 - Finishes** |  | 2027-11-01 | 2028-02-02 |  |  |  |
| L07-A10 |  | L07 partitions and wall framing | 10d | 2027-11-01 | 2027-11-11 | S07-040 | 59d | 2d |
| L07-A20 |  | L07 plaster / board closing | 10d | 2027-11-15 | 2027-11-25 | L07-A10, L07-M20 | 57d | 0d |
| L07-A30 |  | L07 screeds and wet area waterproofing | 8d | 2027-11-26 | 2027-12-04 | L07-A20 | 57d | 15d |
| L07-A40 |  | L07 tiling and flooring | 12d | 2027-12-23 | 2028-01-05 | L07-A30, ENV-03-030 | 42d | 0d |
| L07-A50 |  | L07 ceilings, paint and joinery | 12d | 2028-01-06 | 2028-01-19 | L07-A40 | 42d | 0d |
| L07-A60 |  | L07 final finishes / snagging | 5d | 2028-01-28 | 2028-02-02 | L07-M30 | 42d |  |
|  | 08 | **Level 08 - Finishes** |  | 2027-11-09 | 2028-02-02 |  |  |  |
| L08-A10 |  | L08 partitions and wall framing | 10d | 2027-11-09 | 2027-11-19 | S08-040 | 52d | 2d |
| L08-A20 |  | L08 plaster / board closing | 10d | 2027-11-23 | 2027-12-03 | L08-A10, L08-M20 | 50d | 0d |
| L08-A30 |  | L08 screeds and wet area waterproofing | 8d | 2027-12-04 | 2027-12-13 | L08-A20 | 50d | 8d |
| L08-A40 |  | L08 tiling and flooring | 12d | 2027-12-23 | 2028-01-05 | L08-A30, ENV-03-030 | 42d | 0d |
| L08-A50 |  | L08 ceilings, paint and joinery | 12d | 2028-01-06 | 2028-01-19 | L08-A40 | 42d | 0d |
| L08-A60 |  | L08 final finishes / snagging | 5d | 2028-01-28 | 2028-02-02 | L08-M30 | 42d |  |
|  | 09 | **Level 09 - Finishes** |  | 2027-11-17 | 2028-02-02 |  |  |  |
| L09-A10 |  | L09 partitions and wall framing | 10d | 2027-11-17 | 2027-11-27 | S09-040 | 45d | 2d |
| L09-A20 |  | L09 plaster / board closing | 10d | 2027-12-01 | 2027-12-11 | L09-A10, L09-M20 | 43d | 0d |
| L09-A30 |  | L09 screeds and wet area waterproofing | 8d | 2027-12-13 | 2027-12-21 | L09-A20 | 43d | 1d |
| L09-A40 |  | L09 tiling and flooring | 12d | 2027-12-23 | 2028-01-05 | L09-A30, ENV-03-030 | 42d | 0d |
| L09-A50 |  | L09 ceilings, paint and joinery | 12d | 2028-01-06 | 2028-01-19 | L09-A40 | 42d | 0d |
| L09-A60 |  | L09 final finishes / snagging | 5d | 2028-01-28 | 2028-02-02 | L09-M30 | 42d |  |

| ID | WBS | Activity | Duration | Start | Finish | Predecessors | Total float | Free float |
| --- | --- | --- | --- | --- | --- | --- | --- | --- |
|  | 10 | **Level 10 - Finishes** |  | 2027-11-25 | 2028-02-26 |  |  |  |
| L10-A10 |  | L10 partitions and wall framing | 10d | 2027-11-25 | 2027-12-06 | S10-040 | 38d | 2d |
| L10-A20 |  | L10 plaster / board closing | 10d | 2027-12-09 | 2027-12-20 | L10-A10, L10-M20 | 36d | 0d |
| L10-A30 |  | L10 screeds and wet area waterproofing | 8d | 2027-12-21 | 2027-12-29 | L10-A20 | 36d | 15d |
| L10-A40 |  | L10 tiling and flooring | 12d | 2028-01-17 | 2028-01-29 | L10-A30, ENV-04-030 | 21d | 0d |
| L10-A50 |  | L10 ceilings, paint and joinery | 12d | 2028-01-31 | 2028-02-12 | L10-A40 | 21d | 0d |
| L10-A60 |  | L10 final finishes / snagging | 5d | 2028-02-22 | 2028-02-26 | L10-M30 | 21d |  |
|  | 11 | **Level 11 - Finishes** |  | 2027-12-03 | 2028-02-26 |  |  |  |
| L11-A10 |  | L11 partitions and wall framing | 10d | 2027-12-03 | 2027-12-14 | S11-040 | 31d | 2d |
| L11-A20 |  | L11 plaster / board closing | 10d | 2027-12-17 | 2027-12-28 | L11-A10, L11-M20 | 29d | 0d |
| L11-A30 |  | L11 screeds and wet area waterproofing | 8d | 2027-12-29 | 2028-01-06 | L11-A20 | 29d | 8d |
| L11-A40 |  | L11 tiling and flooring | 12d | 2028-01-17 | 2028-01-29 | L11-A30, ENV-04-030 | 21d | 0d |
| L11-A50 |  | L11 ceilings, paint and joinery | 12d | 2028-01-31 | 2028-02-12 | L11-A40 | 21d | 0d |
| L11-A60 |  | L11 final finishes / snagging | 5d | 2028-02-22 | 2028-02-26 | L11-M30 | 21d |  |
|  | 12 | **Level 12 - Finishes** |  | 2027-12-11 | 2028-02-26 |  |  |  |
| L12-A10 |  | L12 partitions and wall framing | 10d | 2027-12-11 | 2027-12-22 | S12-040 | 24d | 2d |
| L12-A20 |  | L12 plaster / board closing | 10d | 2027-12-25 | 2028-01-05 | L12-A10, L12-M20 | 22d | 0d |
| L12-A30 |  | L12 screeds and wet area waterproofing | 8d | 2028-01-06 | 2028-01-14 | L12-A20 | 22d | 1d |
| L12-A40 |  | L12 tiling and flooring | 12d | 2028-01-17 | 2028-01-29 | L12-A30, ENV-04-030 | 21d | 0d |
| L12-A50 |  | L12 ceilings, paint and joinery | 12d | 2028-01-31 | 2028-02-12 | L12-A40 | 21d | 0d |
| L12-A60 |  | L12 final finishes / snagging | 5d | 2028-02-22 | 2028-02-26 | L12-M30 | 21d |  |
|  | 13 | **Level 13 - Finishes** |  | 2027-12-20 | 2028-03-22 |  |  |  |
| L13-A10 |  | L13 partitions and wall framing | 10d | 2027-12-20 | 2027-12-30 | S13-040 | 17d | 2d |
| L13-A20 |  | L13 plaster / board closing | 10d | 2028-01-03 | 2028-01-13 | L13-A10, L13-M20 | 15d | 0d |
| L13-A30 |  | L13 screeds and wet area waterproofing | 8d | 2028-01-14 | 2028-01-22 | L13-A20 | 15d |  |
| L13-A40 |  | L13 tiling and flooring | 12d | 2028-02-10 | 2028-02-23 | L13-A30, ENV-05-030 | 0d |  |
| L13-A50 |  | L13 ceilings, paint and joinery | 12d | 2028-02-24 | 2028-03-08 | L13-A40 | 0d |  |
| L13-A60 |  | L13 final finishes / snagging | 5d | 2028-03-17 | 2028-03-22 | L13-M30 | 0d |  |

| ID | WBS | Activity | Duration | Start | Finish | Predecessors | Total float | Free float |
| --- | --- | --- | --- | --- | --- | --- | --- | --- |
|  | 14 | **Level 14 - Finishes** |  | 2027-12-28 | 2028-03-22 |  |  |  |
| L14-A10 |  | L14 partitions and wall framing | 10d | 2027-12-28 | 2028-01-07 | S14-040 | 10d | 2d |
| L14-A20 |  | L14 plaster / board closing | 10d | 2028-01-11 | 2028-01-21 | L14-A10, L14-M20 | 8d | 0d |
| L14-A30 |  | L14 screeds and wet area waterproofing | 8d | 2028-01-22 | 2028-01-31 | L14-A20 | 8d |  |
| L14-A40 |  | L14 tiling and flooring | 12d | 2028-02-10 | 2028-02-23 | L14-A30, ENV-05-030 | 0d |  |
| L14-A50 |  | L14 ceilings, paint and joinery | 12d | 2028-02-24 | 2028-03-08 | L14-A40 | 0d |  |
| L14-A60 |  | L14 final finishes / snagging | 5d | 2028-03-17 | 2028-03-22 | L14-M30 | 0d |  |
|  | 15 | **Level 15 - Finishes** |  | 2028-01-05 | 2028-03-22 |  |  |  |
| L15-A10 |  | L15 partitions and wall framing | 10d | 2028-01-05 | 2028-01-15 | S15-040 | 3d | 2d |
| L15-A20 |  | L15 plaster / board closing | 10d | 2028-01-19 | 2028-01-29 | L15-A10, L15-M20 | 1d | 0d |
| L15-A30 |  | L15 screeds and wet area waterproofing | 8d | 2028-01-31 | 2028-02-08 | L15-A20 | 1d |  |
| L15-A40 |  | L15 tiling and flooring | 12d | 2028-02-10 | 2028-02-23 | L15-A30, ENV-05-030 | 0d |  |
| L15-A50 |  | L15 ceilings, paint and joinery | 12d | 2028-02-24 | 2028-03-08 | L15-A40 | 0d |  |
| L15-A60 |  | L15 final finishes / snagging | 5d | 2028-03-17 | 2028-03-22 | L15-M30 | 0d |  |
|  | 02 | **Common Areas** |  | 2027-09-17 | 2028-02-23 |  |  |  |
| COM-010 |  | Lobby and common corridor finishes | 25d | 2027-09-17 | 2027-10-15 | GF-040, MEP-020 | 170d |  |
| COM-020 |  | Staircase finishes and handrails | 30d | 2028-01-20 | 2028-02-23 | M-STRUCT | 58d |  |
|  | 08 | **Vertical Transportation & External Works** |  | 2027-09-10 | 2028-03-25 |  |  |  |
| EXT-010 |  | External drainage and utility tie-ins | 20d | 2027-09-10 | 2027-10-02 | SUB-100 | 151d | 111d |
| LFT-010 |  | Lift shaft survey and guide rail installation | 20d | 2028-01-20 | 2028-02-11 | M-STRUCT, PRE-060 | 21d | 0d |
| EXT-020 |  | External paving, access and landscaping | 20d | 2028-02-10 | 2028-03-03 | EXT-010, M-ENVELOPE | 40d |  |
| LFT-020 |  | Lift equipment installation | 25d | 2028-02-12 | 2028-03-11 | LFT-010 | 21d | 0d |
| LFT-030 |  | Lift testing and authority inspection | 12d | 2028-03-13 | 2028-03-25 | LFT-020 | 21d |  |
|  | 09 | **Testing, Commissioning & Handover** |  | 2028-02-10 | 2028-05-18 |  |  |  |
| TST-010 |  | MEP precommissioning and flushing | 15d | 2028-02-10 | 2028-02-26 | MEP-050, M-ENVELOPE | 26d |  |
| TST-020 |  | Integrated MEP functional testing | 20d | 2028-03-23 | 2028-04-14 | TST-010 SS+10d, L01-A60, L02-A60, L03-A60, L04-A60, L05-A60, L06-A60, L07-A60, L08-A60, L09-A60, L10-A60, L11-A60, L12-A60, L13-A60, L14-A60, L15-A60 | 0d |  |
| TST-030 |  | Fire / life safety integrated test and inspection | 10d | 2028-04-08 | 2028-04-19 | TST-020 SS+14d | 0d |  |
| TST-040 |  | Authority inspections and occupancy approvals | 15d | 2028-04-20 | 2028-05-06 | TST-030, LFT-030, EXT-020 | 0d |  |
| TST-050 |  | Final snag closeout, O&M manuals and training | 15d | 2028-05-02 | 2028-05-18 | TST-040 SS+10d, COM-010, COM-020 | 0d |  |
